# Commercial Construction

Schedule from MS Project XML, 2026-03-02 to 2027-12-22, status date 2026-08-27, A marks actual dates.
MS

## Calendars

- Standard: Mon-Fri 08:00-12:00, 13:00-17:00; Sat-Sun off.

## Resources

| Resource |
| --- |
| G.C. General Management |
| G.C. Project Management |
| G.C. Procurement |
| G.C. Scheduler |
| G.C. Accounting |
| G.C. Superintendent |
| G.C. Survey Crew |
| G.C. Rough Carpenter Crew |
| G.C. Labor Crew |
| G.C. Concrete Crew |
| G.C. Finish Carpenter Crew |
| Site Grading Contractor |
| Plumbing Contractor |
| Plumbing Contractor Management |
| Electric Contractor |
| Electric Contractor Management |
| HVAC Contractor |
| HVAC Contractor Management |
| Elevator Contractor |
| Elevator Contractor Management |
| Steel Erection Contractor |
| Steel Erection Contractor Management |
| Drywall Contractor |
| Masonry Contractor |
| Tile Contractor |
| Roofing Contractor |
| Roofing Contractor Management |
| Window Contractor |
| Carpet Contractor |
| Landscape Contractor |
| Paving Contractor |
| Painting Contractor |

## Schedule

| ID | WBS | Task | Duration | Start | Finish | Predecessors | Complete | Baseline start | Baseline finish | Baseline duration | Constraint | Resources | Work | Actual work |
| --- | --- | --- | --- | --- | --- | --- | --- | --- | --- | --- | --- | --- | --- | --- |
| 1 | 1 | **General Conditions** | 46d | 2026-03-02 A | 2026-05-04 A |  | 100% | 2026-03-02 | 2026-04-01 | 23d |  |  | 297.6h | 297.6h |
| 2 | 1.1 | Receive notice to proceed and sign contract | 3d | 2026-03-02 A | 2026-03-04 A |  | 100% | 2026-03-02 | 2026-03-04 | 3d |  | G.C. General Management | 24h | 24h |
| 3 | 1.2 | Submit bond and insurance documents | 2d | 2026-03-25 A | 2026-03-26 A | 2 | 100% | 2026-03-25 | 2026-03-26 | 2d |  | G.C. Project Management; G.C. General Management [25%] | 20h | 20h |
| 4 | 1.3 | Prepare and submit project schedule | 2d | 2026-03-27 A | 2026-03-30 A | 3 | 100% | 2026-03-27 | 2026-03-30 | 2d |  | G.C. Project Management [25%]; G.C. Scheduler | 20h | 20h |
| 5 | 1.4 | Prepare and submit schedule of values | 2d | 2026-03-31 A | 2026-04-01 A | 4 | 100% | 2026-03-31 | 2026-04-01 | 2d |  | G.C. General Management [10%]; G.C. Project Management | 17.6h | 17.6h |
| 6 | 1.5 | Obtain building permits | 4d | 2026-03-05 A | 2026-03-10 A | 2 | 100% | 2026-03-05 | 2026-03-10 | 4d |  | G.C. Project Management [50%]; G.C. Procurement [50%] | 32h | 32h |
| 7 | 1.6 | Submit preliminary shop drawings | 4.6w | 2026-04-02 A | 2026-05-04 A | 6 | 100% | 2026-03-11 | 2026-03-24 | 2w |  | G.C. Project Management [50%]; G.C. Procurement [50%] | 184h | 184h |
| 8 | 1.7 | Submit monthly requests for payment | 1d | 2026-03-05 A | 2026-03-05 A | 2 | 100% | 2026-03-05 | 2026-03-05 | 1d |  |  |  |  |
| 9 | 2 | **Long Lead Procurement** | 76d | 2026-03-06 A | 2026-06-19 A |  | 100% | 2026-03-06 | 2026-06-11 | 70d |  |  | 1072h | 1072h |
| 10 | 2.1 | Submit shop drawings and order long lead items - steel | 3.2w | 2026-03-06 A | 2026-03-27 A | 8 | 100% | 2026-03-06 | 2026-03-19 | 2w |  | Steel Erection Contractor Management | 128h | 128h |
| 11 | 2.2 | Submit shop drawings and order long lead items - roofing | 3.8w | 2026-05-05 A | 2026-05-29 A | 7 | 100% | 2026-03-25 | 2026-04-07 | 2w |  | Roofing Contractor Management | 152h | 152h |
| 12 | 2.3 | Submit shop drawings and order long lead items - elevator | 2w | 2026-05-05 A | 2026-05-18 A | 7 | 100% | 2026-03-25 | 2026-04-07 | 2w |  | Elevator Contractor Management | 80h | 80h |
| 13 | 2.4 | Submit shop drawings and order long lead items - plumbing | 1.8w | 2026-05-05 A | 2026-05-15 A | 7 | 100% | 2026-03-25 | 2026-04-07 | 2w |  | Plumbing Contractor Management | 72h | 72h |
| 14 | 2.5 | Submit shop drawings and order long lead items - electric | 2w | 2026-06-08 A | 2026-06-19 A | 7 | 100% | 2026-03-25 | 2026-04-07 | 2w | start no earlier than 2026-06-08 | Electric Contractor Management | 80h | 80h |
| 15 | 2.6 | Submit shop drawings and order long lead items - HVAC | 2w | 2026-05-05 A | 2026-05-18 A | 7 | 100% | 2026-03-25 | 2026-04-07 | 2w |  | HVAC Contractor Management | 80h | 80h |
| 16 | 2.7 | Detail, fabricate and deliver steel | 12w | 2026-03-30 A | 2026-06-19 A | 10 | 100% | 2026-03-20 | 2026-06-11 | 12w |  | Steel Erection Contractor Management [50%]; Steel Erection Contractor [50%] | 480h | 480h |
| 17 | 3 | **Mobilize on Site** | 17d | 2026-03-05 A | 2026-03-27 A |  | 100% | 2026-03-05 | 2026-03-18 | 10d |  |  | 156h | 156h |
| 18 | 3.1 | Install temporary power | 2d | 2026-03-05 A | 2026-03-06 A | 2 | 100% | 2026-03-05 | 2026-03-06 | 2d |  | Electric Contractor | 16h | 16h |
| 19 | 3.2 | Install temporary water service | 2d | 2026-03-05 A | 2026-03-06 A | 2 | 100% | 2026-03-05 | 2026-03-06 | 2d |  | Plumbing Contractor | 16h | 16h |
| 20 | 3.3 | Set up site office | 3d | 2026-03-09 A | 2026-03-11 A | 18, 19 | 100% | 2026-03-09 | 2026-03-11 | 3d |  | G.C. Superintendent; G.C. Labor Crew [10%] | 26.4h | 26.4h |
| 21 | 3.4 | Set line and grade benchmarks | 2w | 2026-03-12 A | 2026-03-25 A | 20 | 100% | 2026-03-12 | 2026-03-16 | 3d |  | G.C. Survey Crew | 80h | 80h |
| 22 | 3.5 | Prepare site - lay down yard and temporary fencing | 2d | 2026-03-26 A | 2026-03-27 A | 21 | 100% | 2026-03-17 | 2026-03-18 | 2d |  | Site Grading Contractor; G.C. Labor Crew [10%] | 17.6h | 17.6h |
| 23 | 4 | **Site Grading and Utilities** | 85d | 2026-04-06 A | 2026-07-31 A |  | 100% | 2026-03-19 | 2026-05-06 | 35d |  |  | 824h | 824h |
| 24 | 4.1 | Clear and grub site | 3d | 2026-04-06 A | 2026-04-08 A | 20, 22 | 100% | 2026-03-19 | 2026-03-23 | 3d | start no earlier than 2026-04-06 | Site Grading Contractor | 24h | 24h |
| 25 | 4.2 | Stone site access and temporary parking area | 2d | 2026-04-13 A | 2026-04-14 A | 24, 22 | 100% | 2026-03-24 | 2026-03-25 | 2d | start no earlier than 2026-04-13 | Site Grading Contractor | 16h | 16h |
| 26 | 4.3 | Rough grade site (cut and fill) | 1w | 2026-04-15 A | 2026-04-21 A | 25 | 100% | 2026-03-26 | 2026-04-01 | 1w |  | Site Grading Contractor | 40h | 40h |
| 27 | 4.4 | Install storm drainage | 4w | 2026-04-22 A | 2026-05-19 A | 26 | 100% | 2026-04-02 | 2026-04-15 | 2w |  | Site Grading Contractor | 160h | 160h |
| 28 | 4.5 | Install exterior fire line and building fire riser | 8.6w | 2026-04-22 A | 2026-06-19 A | 26 | 100% | 2026-04-02 | 2026-04-15 | 2w |  | Plumbing Contractor | 344h | 344h |
| 29 | 4.6 | Perform final site grading | 2w | 2026-06-22 A | 2026-07-03 A | 27FF+1d, 28 | 100% | 2026-04-16 | 2026-04-29 | 2w |  | Site Grading Contractor | 80h | 80h |
| 30 | 4.7 | Erect building batter boards and layout building | 4w | 2026-07-06 A | 2026-07-31 A | 29 | 100% | 2026-04-30 | 2026-05-06 | 1w |  | G.C. Survey Crew | 160h | 160h |

Notes:
- 8: Monthly requests for payment can be entered as a recurring task. See the Help topic "Enter a recurring task."

| ID | WBS | Task | Duration | Start | Finish | Predecessors | Complete | Remaining | Baseline start | Baseline finish | Baseline duration | Total slack | Free slack | Constraint | Resources | Work | Actual work |
| --- | --- | --- | --- | --- | --- | --- | --- | --- | --- | --- | --- | --- | --- | --- | --- | --- | --- |
| 31 | 5 | **Foundations** | 92d | 2026-08-03 A | 2026-12-08 |  | 28% | 66.5d | 2026-05-07 | 2026-07-08 | 45d | 211d |  |  |  | 712h | 204h |
| 32 | 5.1 | Excavate foundations | 1w | 2026-08-03 A | 2026-08-07 A | 30 | 100% |  | 2026-05-07 | 2026-05-20 | 2w |  |  |  | Site Grading Contractor [50%] | 20h | 20h |
| 33 | 5.2 | Excavate elevator pit | 15d | 2026-08-10 A | 2026-08-28 | 30 | 93% | 1d | 2026-05-21 | 2026-05-22 | 2d | 230d |  | start no earlier than 2026-08-10 | Site Grading Contractor | 120h | 112h |
| 34 | 5.3 | Form column piers and spread foundations | 25d | 2026-08-17 A | 2026-09-18 | 32 | 36% | 16d | 2026-05-21 | 2026-05-26 | 4d |  |  | start no earlier than 2026-08-17 | G.C. Rough Carpenter Crew | 200h | 72h |
| 35 | 5.4 | Rough-in electric and plumbing in elevator | 4d | 2026-08-31 | 2026-09-03 | 33 |  |  | 2026-05-25 | 2026-05-28 | 4d | 230d |  |  | Plumbing Contractor; Electric Contractor | 64h |  |
| 36 | 5.5 | Form elevator pit walls | 4d | 2026-09-25 | 2026-09-30 | 35 |  |  | 2026-06-02 | 2026-06-05 | 4d | 230d |  |  | G.C. Rough Carpenter Crew | 32h |  |
| 37 | 5.6 | Set reinforcing and anchor bolts | 4d | 2026-09-21 | 2026-09-24 | 34 |  |  | 2026-05-27 | 2026-06-01 | 4d |  |  |  | G.C. Rough Carpenter Crew | 32h |  |
| 38 | 5.7 | Pour column piers and foundations | 21d | 2026-09-25 | 2026-10-23 | 37 |  |  | 2026-06-02 | 2026-06-08 | 5d |  |  |  | G.C. Concrete Crew | 168h |  |
| 39 | 5.8 | Pour concrete elevator walls | 1d | 2026-10-26 | 2026-10-26 | 36 |  |  | 2026-06-09 | 2026-06-09 | 1d | 230d | 19d |  | G.C. Concrete Crew | 8h |  |
| 40 | 5.9 | Cure elevator wall concrete | 7d | 2026-11-23 | 2026-12-01 | 39, 47 |  |  | 2026-06-23 | 2026-07-01 | 7d | 211d |  |  | G.C. Labor Crew [10%] | 5.6h |  |
| 41 | 5.10 | Cure piers and foundations | 7d | 2026-10-26 | 2026-11-03 | 38 |  |  | 2026-06-09 | 2026-06-17 | 7d |  |  |  | G.C. Labor Crew [10%] | 5.6h |  |
| 42 | 5.11 | Strip wall forms | 1d | 2026-12-02 | 2026-12-02 | 40 |  |  | 2026-07-02 | 2026-07-02 | 1d | 211d |  |  | G.C. Labor Crew [10%] | 0.8h |  |
| 43 | 5.12 | Strip column piers and foundation forms | 3d | 2026-11-04 | 2026-11-06 | 41 |  |  | 2026-06-18 | 2026-06-22 | 3d |  |  |  | G.C. Labor Crew | 24h |  |
| 44 | 5.13 | Install pneumatic tube in elevator pit | 3d | 2026-12-03 | 2026-12-07 | 42 |  |  | 2026-07-03 | 2026-07-07 | 3d | 211d |  |  | Elevator Contractor | 24h |  |
| 45 | 5.14 | Prepare and pour concrete floor in elevator pit | 1d | 2026-12-08 | 2026-12-08 | 44 |  |  | 2026-07-08 | 2026-07-08 | 1d | 211d | 72d |  | G.C. Concrete Crew | 8h |  |
| 46 | 6 | **Steel Erection** | 74d | 2026-11-09 | 2027-02-18 |  |  |  | 2026-06-23 | 2026-08-31 | 50d |  |  |  |  | 486h |  |
| 47 | 6.1 | Erect steel columns, beams and joist - 1st and 2nd floors | 2w | 2026-11-09 | 2026-11-20 | 43, 16 |  |  | 2026-06-23 | 2026-07-06 | 2w |  |  |  | Steel Erection Contractor | 80h |  |
| 48 | 6.2 | Erect steel columns, beams and joist - 3rd floor and roof | 3.4w | 2026-11-23 | 2026-12-15 | 47 |  |  | 2026-07-07 | 2026-07-20 | 2w |  |  |  | Steel Erection Contractor | 136h |  |
| 49 | 6.3 | Install miscellaneous iron and bracing - 1st and 2nd floors | 5.4w | 2027-01-13 | 2027-02-18 | 47 |  |  | 2026-08-18 | 2026-08-31 | 2w | 139d |  |  | Steel Erection Contractor [75%] | 162h |  |
| 50 | 6.4 | Install miscellaneous iron and bracing - 3rd floor and roof | 2w | 2026-12-16 | 2026-12-29 | 48 |  |  | 2026-07-21 | 2026-08-03 | 2w |  |  |  | Steel Erection Contractor [75%] | 60h |  |
| 51 | 6.5 | Install stairs and miscellaneous iron railing | 2w | 2026-12-30 | 2027-01-12 | 50 |  |  | 2026-08-04 | 2026-08-17 | 2w |  |  |  | Steel Erection Contractor [50%] | 40h |  |
| 52 | 6.6 | Touch-up paint on steel | 1w | 2027-01-13 | 2027-01-19 | 51 |  |  | 2026-08-18 | 2026-08-24 | 1w |  |  |  | Steel Erection Contractor [20%] | 8h |  |
| 53 | 7 | **Form and Pour Concrete - Floors and Roof** | 89d | 2026-12-16 | 2027-04-19 |  |  |  | 2026-07-07 | 2026-11-04 | 87d | 25d |  |  |  | 716.08h |  |
| 54 | 7.1 | Form 2nd floor including all floor openings | 17d | 2027-01-20 | 2027-02-11 | 52, 13, 14, 15, 47 |  |  | 2026-08-25 | 2026-08-31 | 5d |  |  |  | G.C. Rough Carpenter Crew; G.C. Labor Crew [20%] | 163.2h |  |
| 55 | 7.2 | Install rebar and in-floor utilities (including mechanical, electrical, plumbing) | 5d | 2026-12-16 | 2026-12-22 | 47, 48 |  |  | 2026-07-07 | 2026-07-13 | 5d | 37d |  |  | G.C. Labor Crew [33%]; Plumbing Contractor [33%]; Electric Contractor [33%] | 39.6h |  |
| 56 | 7.3 | Pour 2nd floor slab | 4d | 2027-02-12 | 2027-02-17 | 55, 54 |  |  | 2026-09-01 | 2026-09-04 | 4d |  |  |  | G.C. Concrete Crew | 32h |  |
| 57 | 7.4 | Cure 2nd floor slab | 7d | 2027-02-18 | 2027-02-26 | 56 |  |  | 2026-09-07 | 2026-09-15 | 7d |  |  |  | G.C. Labor Crew [10%] | 5.6h |  |
| 58 | 7.5 | Strip forms from 2nd floor slab | 2d | 2027-03-08 | 2027-03-09 | 57 |  |  | 2026-09-23 | 2026-09-24 | 2d | 75d |  |  | G.C. Labor Crew | 16h |  |
| 59 | 7.6 | Form 3rd floor including all floor openings | 5d | 2027-03-01 | 2027-03-05 | 57 |  |  | 2026-09-16 | 2026-09-22 | 5d |  |  |  | G.C. Rough Carpenter Crew [50%]; G.C. Labor Crew [20%] | 28h |  |
| 60 | 7.7 | Install rebar and in-floor utilities (including mechanical, electrical, plumbing) | 5d | 2027-03-01 | 2027-03-05 | 57 |  |  | 2026-09-16 | 2026-09-22 | 5d |  |  |  | G.C. Labor Crew [33%]; Plumbing Contractor [33%]; Electric Contractor [33%] | 39.6h |  |
| 61 | 7.8 | Pour 3rd floor slab | 4d | 2027-03-08 | 2027-03-11 | 60, 59 |  |  | 2026-09-23 | 2026-09-28 | 4d |  |  |  | G.C. Concrete Crew | 32h |  |
| 62 | 7.9 | Cure 3rd floor slab | 7d | 2027-03-12 | 2027-03-22 | 61 |  |  | 2026-09-29 | 2026-10-07 | 7d |  |  |  | G.C. Labor Crew [10%] | 5.6h |  |
| 63 | 7.10 | Strip forms from 3rd floor slab | 2d | 2027-03-30 | 2027-03-31 | 62 |  |  | 2026-10-15 | 2026-10-16 | 2d | 11d |  |  | G.C. Labor Crew | 16h |  |
| 64 | 7.11 | Form roof slab including all floor openings | 5d | 2027-03-23 | 2027-03-29 | 62 |  |  | 2026-10-08 | 2026-10-14 | 5d |  |  |  | G.C. Rough Carpenter Crew; G.C. Labor Crew [20%] | 48h |  |
| 65 | 7.12 | Install rebar and in-floor utilities (including mechanical, electrical, plumbing) | 5d | 2027-03-23 | 2027-03-29 | 62 |  |  | 2026-10-08 | 2026-10-14 | 5d |  |  |  | G.C. Labor Crew [33%]; Plumbing Contractor [33%]; Electric Contractor [33%] | 39.6h |  |
| 66 | 7.13 | Pour roof slab | 4d | 2027-03-30 | 2027-04-02 | 65, 64 |  |  | 2026-10-15 | 2026-10-20 | 4d |  |  |  | G.C. Concrete Crew | 32h |  |
| 67 | 7.14 | Cure roof slab | 7d | 2027-04-05 | 2027-04-13 | 66 |  |  | 2026-10-21 | 2026-10-29 | 7d |  |  |  | G.C. Labor Crew [10%] | 5.6h |  |
| 68 | 7.15 | Strip forms from roof slab | 2d | 2027-04-14 | 2027-04-15 | 67 |  |  | 2026-10-30 | 2026-11-02 | 2d |  |  |  | G.C. Labor Crew | 16h |  |
| 69 | 7.16 | Form 1st floor | 4d | 2027-03-10 | 2027-03-15 | 58 |  |  | 2026-09-25 | 2026-09-30 | 4d | 80d | 5d |  | G.C. Rough Carpenter Crew | 32h |  |
| 70 | 7.17 | Install electrical underground | 1w | 2027-03-16 | 2027-03-22 | 58 |  |  | 2026-10-01 | 2026-10-07 | 1w | 75d |  |  | Electric Contractor | 40h |  |
| 71 | 7.18 | Install plumbing underground | 1w | 2027-03-16 | 2027-03-22 | 58 |  |  | 2026-10-01 | 2026-10-07 | 1w | 75d |  |  | Plumbing Contractor | 40h |  |
| 72 | 7.19 | Install rebar and in-floor utilities | 4d | 2027-03-10 | 2027-03-15 | 58 |  |  | 2026-09-25 | 2026-09-30 | 4d | 80d | 5d |  | G.C. Labor Crew [33%]; Plumbing Contractor [33%]; Electric Contractor [33%] | 31.68h |  |
| 73 | 7.20 | Pour 1st floor slab | 4d | 2027-03-23 | 2027-03-26 | 69, 72, 70, 71 |  |  | 2026-10-08 | 2026-10-13 | 4d | 75d |  |  | G.C. Concrete Crew | 32h |  |
| 74 | 7.21 | Cure 1st floor slab | 7d | 2027-04-01 | 2027-04-09 | 73 |  |  | 2026-10-19 | 2026-10-27 | 7d | 75d |  |  | G.C. Labor Crew [10%] | 5.6h |  |
| 75 | 7.22 | Strip forms from 1st floor slab | 2d | 2027-04-16 | 2027-04-19 | 74 |  |  | 2026-11-03 | 2026-11-04 | 2d | 73d |  |  | G.C. Labor Crew | 16h |  |

| ID | WBS | Task | Duration | Start | Finish | Predecessors | Baseline start | Baseline finish | Baseline duration | Total slack | Free slack | Resources | Work |
| --- | --- | --- | --- | --- | --- | --- | --- | --- | --- | --- | --- | --- | --- |
| 76 | 8 | **Carpentry Work** | 15d | 2027-04-16 | 2027-05-06 |  | 2026-11-03 | 2026-11-23 | 15d |  |  |  | 120h |
| 77 | 8.1 | Install exterior sheathing and metal studs | 3w | 2027-04-16 | 2027-05-06 | 63, 68 | 2026-11-03 | 2026-11-23 | 3w |  |  | Drywall Contractor | 120h |
| 78 | 9 | **Masonry Work** | 86d | 2027-02-19 | 2027-06-18 |  | 2026-09-01 | 2027-01-05 | 91d | 55d |  |  | 656h |
| 79 | 9.1 | Rough-in plumbing at toilets and masonry walls | 4w | 2027-04-20 | 2027-05-17 | 75, 13 | 2026-11-05 | 2026-12-02 | 4w | 93d |  | Plumbing Contractor | 160h |
| 80 | 9.2 | Lay masonry at core, mechanical, and toilets | 4w | 2027-02-19 | 2027-03-18 | 49, 50 | 2026-09-01 | 2026-09-28 | 4w | 139d |  | Masonry Contractor | 160h |
| 81 | 9.3 | Install exterior masonry work | 5w | 2027-05-07 | 2027-06-10 | 77 | 2026-11-24 | 2026-12-28 | 5w |  |  | Masonry Contractor | 200h |
| 82 | 9.4 | Install roof drains | 2d | 2027-06-17 | 2027-06-18 | 81 | 2027-01-04 | 2027-01-05 | 2d | 59d |  | Roofing Contractor | 16h |
| 83 | 9.5 | Install tile in toilet rooms | 2w | 2027-05-18 | 2027-05-31 | 79 | 2026-12-03 | 2026-12-16 | 2w | 93d |  | Tile Contractor | 80h |
| 84 | 9.6 | Clean masonry | 1w | 2027-06-11 | 2027-06-17 | 81 | 2026-12-29 | 2027-01-04 | 1w | 90d |  | Masonry Contractor [50%] | 20h |
| 85 | 9.7 | Clean toilet room tile | 1w | 2027-06-01 | 2027-06-07 | 83 | 2026-12-17 | 2026-12-23 | 1w | 93d | 48d | Tile Contractor [50%] | 20h |
| 86 | 10 | **Roofing** | 33d | 2027-06-11 | 2027-07-27 |  | 2026-12-29 | 2027-02-11 | 33d | 59d |  |  | 208h |
| 87 | 10.1 | Install flashing at parapet walls | 4d | 2027-06-11 | 2027-06-16 | 81 | 2026-12-29 | 2027-01-01 | 4d | 61d | 2d | Roofing Contractor | 32h |
| 88 | 10.2 | Pour lightweight concrete roof fill | 2d | 2027-06-21 | 2027-06-22 | 11, 82, 87 | 2027-01-06 | 2027-01-07 | 2d | 59d |  | Roofing Contractor | 16h |
| 89 | 10.3 | Install seamless roofing material | 5d | 2027-06-30 | 2027-07-06 | 88FS+5d | 2027-01-15 | 2027-01-21 | 5d | 59d |  | Roofing Contractor | 40h |
| 90 | 10.4 | Spread stone ballast on seamless roof | 5d | 2027-07-07 | 2027-07-13 | 89 | 2027-01-22 | 2027-01-28 | 5d | 59d |  | Roofing Contractor | 40h |
| 91 | 10.5 | Set rooftop equipment | 2w | 2027-07-14 | 2027-07-27 | 90 | 2027-01-29 | 2027-02-11 | 2w | 59d | 42d | HVAC Contractor | 80h |
| 92 | 11 | **Window wall and store front closures** | 75d | 2027-06-11 | 2027-09-23 |  | 2026-12-29 | 2027-04-12 | 75d |  |  |  | 600h |
| 93 | 11.1 | Install window wall aluminum and glass | 5w | 2027-06-11 | 2027-07-15 | 81 | 2026-12-29 | 2027-02-01 | 5w |  |  | Window Contractor | 200h |
| 94 | 11.2 | Install interior stud walls and drywall | 5w | 2027-07-16 | 2027-08-19 | 93 | 2027-02-02 | 2027-03-08 | 5w |  |  | Drywall Contractor | 200h |
| 95 | 11.3 | Install interior doors and hardware | 2w | 2027-09-10 | 2027-09-23 | 94 | 2027-03-30 | 2027-04-12 | 2w |  |  | G.C. Finish Carpenter Crew | 80h |
| 96 | 11.4 | Install store front doors and hardware | 3w | 2027-07-16 | 2027-08-05 | 81 | 2027-02-02 | 2027-02-22 | 3w | 20d | 10d | Window Contractor | 120h |
| 97 | 12 | **Building Finishes** | 90d | 2027-07-16 | 2027-11-18 |  | 2027-02-02 | 2027-06-07 | 90d | 7d |  |  | 1200h |
| 98 | 12.1 | Install millwork and wood trim | 3w | 2027-08-20 | 2027-09-09 | 96, 94 | 2027-03-09 | 2027-03-29 | 3w | 10d |  | G.C. Finish Carpenter Crew | 120h |
| 99 | 12.2 | Paint walls and woodwork | 4w | 2027-09-24 | 2027-10-21 | 98, 95 | 2027-04-13 | 2027-05-10 | 4w |  |  | Painting Contractor | 160h |
| 100 | 12.3 | Install conduit at ceiling plenum space | 3w | 2027-07-16 | 2027-08-05 | 93 | 2027-02-02 | 2027-02-22 | 3w | 15d |  | Electric Contractor | 120h |
| 101 | 12.4 | Install duct in ceiling plenum space | 3w | 2027-08-20 | 2027-09-09 | 94, 100 | 2027-03-09 | 2027-03-29 | 3w | 10d |  | HVAC Contractor | 120h |
| 102 | 12.5 | Install ceiling grid | 2w | 2027-09-10 | 2027-09-23 | 94, 101 | 2027-03-30 | 2027-04-12 | 2w | 10d |  | Drywall Contractor | 80h |
| 103 | 12.6 | Install ceiling tile | 2w | 2027-09-24 | 2027-10-07 | 102 | 2027-04-13 | 2027-04-26 | 2w | 30d |  | Drywall Contractor | 80h |
| 104 | 12.7 | Hang wallpaper | 2w | 2027-10-22 | 2027-11-04 | 102 | 2027-05-11 | 2027-05-24 | 2w | 10d |  | Painting Contractor | 80h |
| 105 | 12.8 | Install building carpet | 4w | 2027-10-22 | 2027-11-18 | 99 | 2027-05-11 | 2027-06-07 | 4w |  |  | Carpet Contractor | 160h |
| 106 | 12.9 | Install hardware and accessories | 3w | 2027-10-22 | 2027-11-11 | 99 | 2027-05-11 | 2027-05-31 | 3w | 5d |  | G.C. Finish Carpenter Crew | 120h |
| 107 | 12.10 | Complete interior and exterior sod and plantings | 2w | 2027-10-22 | 2027-11-04 | 99 | 2027-05-11 | 2027-05-24 | 2w | 7d |  | Landscape Contractor | 80h |
| 108 | 12.11 | Pave, curb, and stripe parking lot | 2w | 2027-11-05 | 2027-11-18 | 107 | 2027-05-25 | 2027-06-07 | 2w | 7d |  | Paving Contractor | 80h |

| ID | WBS | Task | Duration | Start | Finish | Predecessors | Baseline start | Baseline finish | Baseline duration | Total slack | Free slack | Resources | Work |
| --- | --- | --- | --- | --- | --- | --- | --- | --- | --- | --- | --- | --- | --- |
| 109 | 13 | **Elevators** | 40d | 2027-03-19 | 2027-05-13 |  | 2026-09-29 | 2026-11-23 | 40d | 139d |  |  | 320h |
| 110 | 13.1 | Set elevator equipment in shafts | 4w | 2027-03-19 | 2027-04-15 | 80, 45, 12 | 2026-09-29 | 2026-10-26 | 4w | 139d |  | Elevator Contractor | 160h |
| 111 | 13.2 | Set equipment in mechanical room | 2w | 2027-04-16 | 2027-04-29 | 110 | 2026-10-27 | 2026-11-09 | 2w | 139d |  | Elevator Contractor | 80h |
| 112 | 13.3 | Test and align doors and equipment | 2w | 2027-04-30 | 2027-05-13 | 111 | 2026-11-10 | 2026-11-23 | 2w | 139d |  | Elevator Contractor | 80h |
| 113 | 14 | **Plumbing** | 100d | 2027-06-18 | 2027-11-04 |  | 2027-01-05 | 2027-05-24 | 100d | 10d |  |  | 440h |
| 114 | 14.1 | Rough-in plumbing in drywall walls | 4w | 2027-07-16 | 2027-08-12 | 93 | 2027-02-02 | 2027-03-01 | 4w | 45d |  | Plumbing Contractor | 160h |
| 115 | 14.2 | Tie-in fire line riser and set valves | 2w | 2027-06-18 | 2027-07-01 | 84 | 2027-01-05 | 2027-01-18 | 2w | 90d | 80d | Plumbing Contractor | 80h |
| 116 | 14.3 | Set plumbing fixtures and trim | 3w | 2027-08-13 | 2027-09-02 | 85, 114, 79 | 2027-03-02 | 2027-03-22 | 3w | 45d | 35d | Plumbing Contractor | 120h |
| 117 | 14.4 | Flush, test, and clean piping and fixtures | 2w | 2027-10-22 | 2027-11-04 | 99, 115, 116 | 2027-05-11 | 2027-05-24 | 2w | 10d |  | Plumbing Contractor | 80h |
| 118 | 15 | **Electrical** | 140d | 2027-04-20 | 2027-11-01 |  | 2026-11-05 | 2027-05-19 | 140d | 17d |  |  | 656h |
| 119 | 15.1 | Rough-in electrical in masonry walls | 4w | 2027-04-20 | 2027-05-17 | 75, 14 | 2026-11-05 | 2026-12-02 | 4w | 73d | 58d | Electric Contractor | 160h |
| 120 | 15.2 | Rough-in electrical in drywall walls | 4w | 2027-08-06 | 2027-09-02 | 93 | 2027-02-23 | 2027-03-22 | 4w | 30d | 15d | Electric Contractor | 160h |
| 121 | 15.3 | Pull wire in conduit and set area transformers | 3w | 2027-09-03 | 2027-09-23 | 119, 100 | 2027-03-23 | 2027-04-12 | 3w | 15d |  | Electric Contractor | 120h |
| 122 | 15.4 | Install and terminate electrical devices | 3w | 2027-09-24 | 2027-10-14 | 121, 120 | 2027-04-13 | 2027-05-03 | 3w | 15d |  | Electric Contractor | 120h |
| 123 | 15.5 | Make electrical terminations for HVAC equipment | 2d | 2027-10-29 | 2027-11-01 | 121, 91 | 2027-05-18 | 2027-05-19 | 2d | 17d |  | Electric Contractor | 16h |
| 124 | 15.6 | Install light fixtures - test and clean | 2w | 2027-10-15 | 2027-10-28 | 102, 122 | 2027-05-04 | 2027-05-17 | 2w | 15d |  | Electric Contractor | 80h |
| 125 | 16 | **Heating and Ventilating - AC** | 182d | 2027-03-19 | 2027-11-29 |  | 2026-09-29 | 2027-06-16 | 187d | 17d |  |  | 600h |
| 126 | 16.1 | Set equipment in mechanical room | 2w | 2027-03-19 | 2027-04-01 | 80, 15 | 2026-09-29 | 2026-10-12 | 2w | 146d | 75d | HVAC Contractor | 80h |
| 127 | 16.2 | Rough-in mechanical in masonry walls | 4w | 2027-04-20 | 2027-05-17 | 75 | 2026-11-05 | 2026-12-02 | 4w | 114d | 43d | HVAC Contractor | 160h |
| 128 | 16.3 | Rough-in mechanical in drywall walls | 2w | 2027-09-10 | 2027-09-23 | 93 | 2027-03-30 | 2027-04-12 | 2w | 64d |  | HVAC Contractor | 80h |
| 129 | 16.4 | Install duct in building chase | 3w | 2027-07-28 | 2027-08-17 | 126, 127, 93 | 2027-02-12 | 2027-03-04 | 3w | 71d | 54d | HVAC Contractor | 120h |
| 130 | 16.5 | Set HVAC trim and test and balance system | 4w | 2027-11-02 | 2027-11-29 | 102, 129, 123 | 2027-05-20 | 2027-06-16 | 4w | 17d |  | HVAC Contractor | 160h |
| 131 | 17 | **Final Clean-up and Occupancy** | 70d | 2027-08-20 | 2027-11-25 |  | 2027-03-09 | 2027-06-14 | 70d | 19d |  |  | 96h |
| 132 | 17.1 | Install hard tile flooring in common areas | 1w | 2027-08-20 | 2027-08-26 | 94 | 2027-03-09 | 2027-03-15 | 1w | 56d |  | Tile Contractor | 40h |
| 133 | 17.2 | Clean hard tile floors | 4d | 2027-08-27 | 2027-09-01 | 132 | 2027-03-16 | 2027-03-19 | 4d | 56d |  | Tile Contractor [50%] | 16h |
| 134 | 17.3 | Remove debris from building and do final clean-up | 4d | 2027-11-19 | 2027-11-24 | 105, 104, 106, 107, 117, 124, 103, 133 | 2027-06-08 | 2027-06-11 | 4d |  |  | G.C. Labor Crew | 32h |
| 135 | 17.4 | Substantial completion date | 1d | 2027-11-25 | 2027-11-25 | 134 | 2027-06-14 | 2027-06-14 | 1d | 19d |  | G.C. Superintendent | 8h |

| ID | WBS | Task | Duration | Start | Finish | Predecessors | Baseline start | Baseline finish | Baseline duration | Total slack | Resources | Work |
| --- | --- | --- | --- | --- | --- | --- | --- | --- | --- | --- | --- | --- |
| 136 | 18 | **Complete Final Inspections** | 6d | 2027-11-25 | 2027-12-02 |  | 2027-06-14 | 2027-06-21 | 6d |  |  | 48h |
| 137 | 18.1 | Complete elevator inspection and certification | 3d | 2027-11-25 | 2027-11-29 | 134, 112 | 2027-06-14 | 2027-06-16 | 3d |  | Elevator Contractor | 24h |
| 138 | 18.2 | Perform architect's inspection | 1d | 2027-11-30 | 2027-11-30 | 134, 108, 137 | 2027-06-17 | 2027-06-17 | 1d |  | G.C. Superintendent [50%]; G.C. Project Management [50%] | 8h |
| 139 | 18.3 | Perform local building agency inspection | 1d | 2027-12-01 | 2027-12-01 | 138 | 2027-06-18 | 2027-06-18 | 1d |  | G.C. Project Management [50%]; G.C. Superintendent [50%] | 8h |
| 140 | 18.4 | Perform Fire Marshal's inspection | 1d | 2027-12-02 | 2027-12-02 | 139 | 2027-06-21 | 2027-06-21 | 1d |  | G.C. Superintendent [50%]; G.C. Project Management [50%] | 8h |
| 141 | 19 | Complete punch list items from all inspections | 2w | 2027-12-03 | 2027-12-16 | 140 | 2027-06-22 | 2027-07-05 | 2w |  | G.C. Superintendent [11%]; G.C. Labor Crew [11%]; Plumbing Contractor [11%]; Electric Contractor [11%]; HVAC Contractor [11%]; Drywall Contractor [11%]; Carpet Contractor [11%]; Paving Contractor [11%]; Painting Contractor [11%] | 79.2h |
| 142 | 20 | Obtain certificate of occupancy | 2d | 2027-12-17 | 2027-12-20 | 141 | 2027-07-06 | 2027-07-07 | 2d | 1d | G.C. Project Management | 16h |
| 143 | 21 | Issue final completion documents including warranties | 1d | 2027-12-21 | 2027-12-21 | 141 | 2027-07-08 | 2027-07-08 | 1d |  | G.C. Project Management | 8h |
| 144 | 22 | Issue final request for payment | 1d | 2027-12-22 | 2027-12-22 | 142, 143 | 2027-07-09 | 2027-07-09 | 1d |  | G.C. Project Management [33%]; G.C. Accounting [33%]; G.C. General Management [33%] | 7.92h |
